WBS,Task_ID,Building,Zone,Subzone,Trade,Task_Name,Predecessor,Planned_Start,Planned_Finish,Actual_Start,Actual_Finish,Forecast_Finish,Base_Crew_Size,Subcontractor,Primary_Equipment,Delay_Reason_Code,Progress_Pct,Status_AsOf_2026_10_31,Planned_Duration_Days,Forecast_Variance_Days,Zone_Name,Subzone_Name,Predecessor_Relation,Duration_Basis,Work_Package_Note
1.1.1,T001,1동,A,A1,철근콘크리트,코어벽 철근 조립,,2026-10-01,2026-10-10,2026-10-01,2026-10-12,2026-10-12,22,협력사A(철근),TC-01,MAT_DELAY,100,Completed,8,1,1동 지상골조 구역,1동 코어·벽체 골조,,작업일(일요일·공휴일 제외),
1.1.2,T002,1동,A,A1,철근콘크리트,코어벽 거푸집 설치,T001,2026-10-05,2026-10-14,2026-10-06,2026-10-16,2026-10-16,20,협력사B(형틀),TC-01,LIFT_SLOT,100,Completed,8,2,1동 지상골조 구역,1동 코어·벽체 골조,SS(구획별),작업일(일요일·공휴일 제외),코어벽 철근 조립과 거푸집 설치는 구획별 병행. 선행 구획 철근 검측 후 해당 구획 거푸집 착수
1.2.1,T003,1동,A,A2,철근콘크리트,슬래브 데크·거푸집 설치,T002,2026-10-08,2026-10-17,2026-10-10,2026-10-20,2026-10-20,18,협력사C(데크),TC-01,LIFT_SLOT,100,Completed,8,2,1동 지상골조 구역,1동 슬래브·타설 작업면,SS(구획별),작업일(일요일·공휴일 제외),거푸집 공정과 슬래브 데크·거푸집은 구획별 병행. 계획 시작일 기준 3일 시차
1.2.2,T004,1동,A,A2,철근콘크리트,슬래브 철근 배근,T003,2026-10-13,2026-10-23,2026-10-14,2026-10-24,2026-10-24,20,협력사A(철근),TC-01,MAT_DELAY,100,Completed,10,1,1동 지상골조 구역,1동 슬래브·타설 작업면,SS(구획별),작업일(일요일·공휴일 제외),구획별 배근 완료 후 후속 타설 허용
1.2.3,T005,1동,A,A2,철근콘크리트,슬래브 콘크리트 타설,T004,2026-10-16,2026-10-29,2026-10-17,,2026-11-02,18,협력사D(콘크리트),PC-01(A4 거치→A2 타설),MAT_DELAY,87,In Progress,12,3,1동 지상골조 구역,1동 슬래브·타설 작업면,SS(구획별),작업일(일요일·공휴일 제외),"13일 작업기간은 타설준비·검측, 3회 실제 타설(10/19·10/23·10/28), 양생·마감으로 구성. 레미콘·펌프카 기록은 실제 타설일만 해당"
1.3.1,T006,1동,A,A3,가설·물류,건설용 호이스트 설치·시운전,,2026-10-20,2026-11-03,2026-10-21,,2026-11-04,8,협력사E(호이스트),HST-01(마스트 양중 TC-01 지원),MOB_DELAY,71,In Progress,13,1,1동 지상골조 구역,1동 호이스트·작업자 진입,,작업일(일요일·공휴일 제외),
2.1.1,T007,공통,B,B1,물류,반입차량 게이트 운영,,2026-10-05,2026-12-31,2026-10-05,,2026-12-31,7,협력사F(물류),TRUCK,ONGOING,29,In Progress,74,0,메인게이트·하역·적치 구역,메인게이트·차량대기,,작업일(일요일·공휴일 제외),상시 운영공정
2.1.2,T008,공통,B,B2,물류,자재 하역·분류,T007,2026-10-05,2026-12-31,2026-10-05,,2026-12-31,10,협력사F(물류),FL-01/FL-02,ONGOING,29,In Progress,74,0,메인게이트·하역·적치 구역,자재하역장,SS,작업일(일요일·공휴일 제외),게이트 운영과 하역·분류는 상시 지원공정으로 같은 날 병행 운영
2.1.3,T009,공통,B,B3,물류,자재 적치·불출,T008,2026-10-05,2026-12-31,2026-10-05,,2026-12-31,8,협력사F(물류),FL-03,ONGOING,29,In Progress,74,0,메인게이트·하역·적치 구역,자재적치장,SS,작업일(일요일·공휴일 제외),하역·분류와 적치·불출은 상시 지원공정으로 같은 날 병행 운영
3.1.1,T010,포디움,C,C1,외장,외장 브래킷 설치,,2026-10-05,2026-10-20,2026-10-06,2026-10-23,2026-10-23,14,협력사G(외장),SL-01/SL-02,LIFT_CONFLICT,100,Completed,13,3,포디움 외장·양중 구역,포디움 동측 외장,,작업일(일요일·공휴일 제외),
3.1.2,T011,포디움,C,C2,외장·양중,커튼월 자재 양중,T010,2026-10-14,2026-11-07,2026-10-15,,2026-11-09,12,협력사G(외장),TC-02,WIND_HOLD,64,In Progress,22,1,포디움 외장·양중 구역,타워크레인 반경 중첩,SS(구획별),작업일(일요일·공휴일 제외),외장 브래킷 설치 완료 구획부터 커튼월 자재 양중을 구획별 병행
3.1.3,T012,포디움,C,C3,철골·양중,파사드 보강철골 양중·설치,,2026-10-19,2026-10-28,2026-10-19,2026-10-30,2026-10-30,10,협력사H(철골),MC-01,PERMIT_DELAY,100,Completed,9,2,포디움 외장·양중 구역,이동식크레인 작업구역,,작업일(일요일·공휴일 제외),
4.1.1,T013,2동,D,D1,토공·가설,지하램프 굴착면 정리,,2026-10-05,2026-10-12,2026-10-05,2026-10-12,2026-10-12,9,협력사I(토목),EX-01/EX-02,ROUTE_CONFLICT,100,Completed,6,0,2동 지하 설비·토목 구역,지하램프 공용출입,,작업일(일요일·공휴일 제외),
4.1.2,T014,2동,D,D3,토목·방수,흙막이 보수·방수 바탕정리,T013,2026-10-15,2026-11-06,2026-10-16,,2026-11-07,12,협력사I(토목),EX-01,MEP_CONFLICT,65,In Progress,20,1,2동 지하 설비·토목 구역,2동 지하3층(B3F) 토목·방수,FS,작업일(일요일·공휴일 제외),
4.2.1,T015,2동,D,D2,기계설비,슬리브·인서트 설치,,2026-10-05,2026-10-17,2026-10-06,2026-10-17,2026-10-17,14,협력사J(설비),FL-02,DRAWING_REWORK,100,Completed,11,0,2동 지하 설비·토목 구역,2동 지하2층(B2F) 설비작업,,작업일(일요일·공휴일 제외),
4.2.2,T016,2동,D,D2,기계설비,덕트·배관 지지대 설치,T015,2026-10-12,2026-11-10,2026-10-13,,2026-11-12,16,협력사J(설비),SL-03,SPACE_CONFLICT,60,In Progress,26,2,2동 지하 설비·토목 구역,2동 지하2층(B2F) 설비작업,SS(구획별),작업일(일요일·공휴일 제외),슬리브·인서트 완료 구획부터 덕트·배관 지지대 설치를 구획별 병행
4.3.1,T017,2동,D,D2,전기,가설전기·조명 보강,,2026-10-07,2026-10-21,2026-10-07,2026-10-22,2026-10-22,8,협력사K(전기),-,CLOSEOUT_DELAY,100,Completed,12,1,2동 지하 설비·토목 구역,2동 지하2층(B2F) 설비작업,,작업일(일요일·공휴일 제외),
4.3.2,T018,2동,D,D2,기계설비,배관 용접·화기작업,T016,2026-10-19,2026-11-14,2026-10-20,,2026-11-16,10,협력사J(설비),-,PERMIT_DELAY,40,In Progress,24,1,2동 지하 설비·토목 구역,2동 지하2층(B2F) 설비작업,SS(구획별),작업일(일요일·공휴일 제외),지지대 설치 완료 구획부터 배관 용접·화기작업을 구획별 병행
5.1.1,T019,공통,A,A3,안전·가설,1동 작업자 동선 분리시설 설치,,2026-10-05,2026-10-10,2026-10-05,2026-10-08,2026-10-08,6,협력사L(가설안전),-,NONE,100,Completed,5,-1,1동 지상골조 구역,1동 호이스트·작업자 진입,,작업일(일요일·공휴일 제외),
5.1.2,T020,공통,B,B1,안전·가설,게이트 보행·차량 분리시설 개선,,2026-10-12,2026-10-19,2026-10-13,2026-10-21,2026-10-21,5,협력사L(가설안전),-,DELIVERY_PRESSURE,100,Completed,7,2,메인게이트·하역·적치 구역,메인게이트·차량대기,,작업일(일요일·공휴일 제외),
5.1.3,T021,공통,D,D1,안전·가설,지하램프 임시 보행통로 설치,,2026-10-20,2026-10-28,2026-10-21,2026-10-30,2026-10-30,5,협력사L(가설안전),-,ROUTE_CONFLICT,100,Completed,8,2,2동 지하 설비·토목 구역,지하램프 공용출입,,작업일(일요일·공휴일 제외),
6.1.1,T022,공통,C,C2,안전·양중,양중 통제구역 설정·유지,,2026-10-05,2026-12-31,2026-10-05,,2026-12-31,4,현장안전팀,-,ONGOING,29,In Progress,74,0,포디움 외장·양중 구역,타워크레인 반경 중첩,,작업일(일요일·공휴일 제외),
